gantt
    title Holly Grace - Critical Path Progress
    dateFormat YYYY-MM-DD
    axisFormat %b %d
    excludes weekends

    section Slice 1 (100%)
    1.5 Write SAD parser (mermaid -> AST) :done, t1_5, 2026-02-18, 1d
    1.6 Define architecture.yaml schema :done, t1_6, 2026-02-18, 1d
    1.7 Build extraction pipeline :done, t1_7, 2026-02-18, 1d
    1.8 Link YAML entries to SAD source lines :done, t1_8, 2026-02-18, 0.5d
    2.6 Implement singleton loader :done, t2_6, 2026-02-18, 1d
    2.7 Implement component/boundary/ICD lookups :done, t2_7, 2026-02-18, 1d
    2.8 Implement hot-reload with validation :done, t2_8, 2026-02-18, 1d
    3.6 Implement core decorators :done, t3_6, 2026-02-18, 1d
    3.7 Implement ICD contract enforcement :done, t3_7, 2026-02-18, 1d
    3a.8 Validate full pipeline - YAML -> registry -> :done, t3a_8, 2026-02-18, 1d
    3a.10 Implement minimal K8 eval gate :done, t3a_10, 2026-02-18, 1d
    3a.12 Run gate, produce pass/fail report :done, t3a_12, 2026-02-18, 0.5d
    section Slice 2 (100%)
    5.8 Build ICD Schema Registry :done, t5_8, 2026-02-18, 0.5d
    5.5 Implement ICD as Pydantic models :done, t5_5, 2026-02-18, 0.5d
    5.6 Register ICDs in architecture.yaml :done, t5_6, 2026-02-18, 0.5d
    7.1 Extend AST scanner with per-module rules :done, t7_1, 2026-02-18, 0.5d
    7.2 Add wrong-decorator detection :done, t7_2, 2026-02-18, 0.5d
    8.3 Write contract fixture generator :done, t8_3, 2026-02-18, 0.5d
    9.2 Implement fitness functions :done, t9_2, 2026-02-18, 0.5d
    10.2 Build RTM generator :done, t10_2, 2026-02-18, 0.5d
    11.1 Integrate drift, scanner, fitness, RTM into unified :done, t11_1, 2026-02-18, 0.5d
    11.3 Define Phase A gate checklist :done, t11_3, 2026-02-18, 0.5d
    section Slice 3 (100%)
    13.1 FMEA - kernel invariant desynchronization :done, t13_1, 2026-02-19, 0.5d
    14.1 TLA+ spec - kernel invariant state machine :done, t14_1, 2026-02-19, 1.5d
    14.5 Implement formal state-machine validator :done, t14_5, 2026-02-19, 1.5d
    15.4 Implement per TLA+ state machine spec :done, t15_4, 2026-02-19, 1.5d
    16.3 Implement K1 schema validation per TLA+ :done, t16_3, 2026-02-19, 1.5d
    16.4 Implement K2 permission gating per TLA+ :done, t16_4, 2026-02-19, 1.5d
    16.5 Implement K3 bounds checking per TLA+ :done, t16_5, 2026-02-19, 1.5d
    16.6 Implement K4 trace injection per TLA+ :done, t16_6, 2026-02-19, 1.5d
    16.9 Verify K1-K4 Guard Condition Determinism :done, t16_9, 2026-02-19, 1.5d
    17.3 Implement K5 idempotency (RFC 8785) per TLA+ :done, t17_3, 2026-02-19, 1.5d
    17.4 Implement K6 audit WAL per TLA+ :done, t17_4, 2026-02-19, 1.5d
    17.7 Verify K5-K6 Invariant Preservation :done, t17_7, 2026-02-19, 1.5d
    18.3 Implement K7 HITL gate per TLA+ :done, t18_3, 2026-02-19, 1.5d
    18.4 Implement K8 eval gate per TLA+ :done, t18_4, 2026-02-19, 1.5d
    18.9 Verify K7-K8 Failure Isolation :done, t18_9, 2026-02-19, 1.5d
    20.3 Implement dissimilar verification channel :done, t20_3, 2026-02-19, 1d
    20.5 Verify Dissimilar Verifier State Machine :done, t20_5, 2026-02-19, 1.5d
    21.2 Execute SIL-3 verification :done, t21_2, 2026-02-19, 0.5d
    21.6 Define Phase B gate checklist :done, t21_6, 2026-02-19, 0.5d
    section Slice 4 (42%)
    22.5 Implement async pool, models, RLS, migrations :done, t22_5, 2026-02-19, 0.5d
    22.7 Apply RLS per ICD Boundary :done, t22_7, 2026-02-19, 0.5d
    23.3 Implement time-based partitions, auto-create, S3 :done, t23_3, 2026-02-19, 0.5d
    24.3 Implement pool, pub/sub, queues, cache, HA :crit, t24_3, after t23_3, 0.5d
    25.3 Implement client, tenant-isolated collections, :crit, t25_3, after t24_3, 0.5d
    26.2 Execute SIL-2 test suite :crit, t26_2, after t25_3, 0.5d
    26.4 Phase C gate checklist :crit, t26_4, after t26_2, 0.5d
    section Slice 5 (0%)
    27.4 Implement canonical redaction library :crit, t27_4, after t26_4, 1d
    28.3 Implement input sanitization, output redaction, :crit, t28_3, after t27_4, 1d
    30.3 Implement detect + redact in traces per ICD-v0.1 :crit, t30_3, after t28_3, 1d
    31.4 Implement per TLA+ egress spec :crit, t31_4, after t30_3, 1.5d
    31.5 Verify egress as independent safety layer :crit, t31_5, after t31_4, 1d
    31.7 Verify Egress Filter Pipeline Guarantees :crit, t31_7, after t31_5, 1.5d
    33.1 Aggregate FMEA results for D.27-D.32 :crit, t33_1, after t31_7, 0.5d
    33.2 Build structured safety argument :crit, t33_2, after t33_1, 1d
    33.5 Integrate all 49 ICDs into Phase D Safety Case :crit, t33_5, after t33_2, 0.5d
    33.4 Phase D gate checklist :crit, t33_4, after t33_5, 0.5d
    section Slice 6 (0%)
    36.8 Implement L0-L4 Predicate Functions :crit, t36_8, after t33_4, 0.5d
    36.9 Validate L0-L4 Predicates with Property-Based Testing :crit, t36_9, after t36_8, 0.5d
    36.4 Implement 7-level hierarchy + lexicographic gating :crit, t36_4, after t36_9, 0.5d
    36.5 Implement Celestial L0-L4 as executable predicates :crit, t36_5, after t36_4, 0.5d
    37.4 Implement T0-T3 classification + Assembly Index per :crit, t37_4, after t36_5, 0.5d
    37.7 Validate APS Assembly Index per Goal Hierarchy :crit, t37_7, after t37_4, 0.5d
    38.4 Implement spawn/steer/dissolve, contracts, :crit, t38_4, after t37_7, 0.5d
    38.8 Verify Steer Operations maintain Contract Satisfaction :crit, t38_8, after t38_4, 0.5d
    39.4 Implement 3-tier - short (Redis via ICD-041), :crit, t39_4, after t38_8, 0.5d
    40.2 Execute SIL-2 test suite :crit, t40_2, after t39_4, 0.5d
    40.3 Run all Core eval suites :crit, t40_3, after t40_2, 0.5d
    40.5 Phase E gate checklist :crit, t40_5, after t40_3, 0.5d
    section Slice 7 (0%)
    41.4 Implement lane manager, policy engine, dispatchers :crit, t41_4, after t40_5, 0.5d
    42.4 Implement registry per ICD-019/020, per-agent :crit, t42_4, after t41_4, 0.5d
    43.3 Implement code (gRPC->sandbox per ICD-022), web :crit, t43_3, after t42_4, 0.5d
    44.5 Implement durable engine per ICD-021, saga, :crit, t44_5, after t43_3, 0.5d
    45.2 Execute SIL-2 test suite :crit, t45_2, after t44_5, 0.5d
    45.4 Phase F gate checklist :crit, t45_4, after t45_2, 0.5d
    section Slice 8 (0%)
    46.5 Build minimal container - no network, no Holly deps :crit, t46_5, after t45_4, 1d
    47.3 Implement per TLA+ sandbox spec per Behavior Spec §2 :crit, t47_3, after t46_5, 1.5d
    47.5 Validate gRPC Proto Constraints per ICD-022 :crit, t47_5, after t47_3, 1.5d
    48.3 Implement per TLA+ isolation spec per Behavior Spec §2 :crit, t48_3, after t47_5, 1.5d
    48.5 Verify Isolation Invariant Preservation per :crit, t48_5, after t48_3, 1.5d
    49.4 Implement production runtime configs per Behavior :crit, t49_4, after t48_5, 1d
    49.5 Adversarial Runtime Escape Testing per Behavior :crit, t49_5, after t49_4, 1.5d
    50.2 Execute SIL-3 test suite per Behavior Spec §2 :crit, t50_2, after t49_5, 0.5d
    50.3 Run TLA+ model checker against sandbox spec per :crit, t50_3, after t50_2, 1.5d
    50.6 Phase G gate checklist :crit, t50_6, after t50_3, 0.5d
    section Slice 9 (0%)
    51.4 Implement Starlette app factory per ICD-001/002/003, :crit, t51_4, after t50_6, 0.5d
    52.3 Implement JWKS verification per ICD-047, claims :crit, t52_3, after t51_4, 0.5d
    53.3 Implement RBAC enforcement from JWT claims per K2 :crit, t53_3, after t52_3, 0.5d
    54.1 Implement routes per ICD-003/023/024/025/026/027/028 :crit, t54_1, after t53_3, 0.5d
    55.3 Implement WS manager per ICD-025/027, 9 channels, :crit, t55_3, after t54_1, 0.5d
    56.2 Execute SIL-2 test suite per ICD routes :crit, t56_2, after t55_3, 0.5d
    56.5 Verify All 49 ICDs have Corresponding API Routes or :crit, t56_5, after t56_2, 0.5d
    56.4 Phase H gate checklist :crit, t56_4, after t56_5, 0.5d
    section Slice 10 (0%)
    57.4 Implement unified ingest per ICD-023/024, sampling, :crit, t57_4, after t56_4, 0.5d
    58.2 Implement structured JSON logger per ICD-026, :crit, t58_2, after t57_4, 0.5d
    59.3 Implement decision tree persistence per ICD-025, :crit, t59_3, after t58_2, 0.5d
    60.2 Implement Prometheus collectors :crit, t60_2, after t59_3, 0.5d
    61.2 Implement PG (partitioned per ICD-036) + Redis :crit, t61_2, after t60_2, 0.5d
    61.6 Implement Observability Trace Correlation per ICD :crit, t61_6, after t61_2, 0.5d
    61.5 Phase I gate checklist :crit, t61_5, after t61_6, 0.5d
    section Slice 11 (0%)
    62.5 Implement BaseAgent - lifecycle, message protocol :crit, t62_5, after t61_5, 0.5d
    63.4 Implement type catalog, capability declarations :crit, t63_4, after t62_5, 0.5d
    64.2 Implement Holly, researcher, builder, reviewer, :crit, t64_2, after t63_4, 0.5d
    64.3 Establish eval baselines :crit, t64_3, after t64_2, 0.5d
    65.2 Implement Celestial L0-L4 as executable predicate :crit, t65_2, after t64_3, 0.5d
    65.7 Implement Terrestrial L5-L6 Predicate Functions per :crit, t65_7, after t65_2, 0.5d
    65.8 Verify Lexicographic Gating Enforcement per Goal :crit, t65_8, after t65_7, 0.5d
    65.9 Implement Multi-Agent Feasibility Checker per Goal :crit, t65_9, after t65_8, 0.5d
    65.4 Build constitution eval suite per Goal Hierarchy §2 :crit, t65_4, after t65_9, 0.5d
    65.6 Phase J gate checklist :crit, t65_6, after t65_4, 0.5d
    section Slice 12 (0%)
    66.2 Implement eval framework harness :crit, t66_2, after t65_6, 0.5d
    66.3 Implement dataset loaders :crit, t66_3, after t66_2, 0.5d
    66.4 Implement metric collectors + regression tracker :crit, t66_4, after t66_3, 0.5d
    67.1 Build per-agent property-based eval suites per Goal :crit, t67_1, after t66_4, 0.5d
    67.2 Build adversarial eval suites per Goal Hierarchy :crit, t67_2, after t67_1, 0.5d
    67.3 Establish production baselines per Goal Hierarchy :crit, t67_3, after t67_2, 0.5d
    68.1 Implement constitution gate per Goal Hierarchy §2.4 :crit, t68_1, after t67_3, 0.5d
    68.4 Integrate Constitution Gate with K8 Eval Gate :crit, t68_4, after t68_1, 0.5d
    69.1 Implement eval CI pipeline stage :crit, t69_1, after t68_4, 0.5d
    69.5 Phase K gate checklist :crit, t69_5, after t69_1, 0.5d
    section Slice 13 (0%)
    70.2 Implement Pydantic env-driven config :crit, t70_2, after t69_5, 0.5d
    71.2 Implement runtime hot reload without restart :crit, t71_2, after t70_2, 0.5d
    72.3 Implement change logging, HITL on dangerous keys, :crit, t72_3, after t71_2, 0.5d
    72.6 Phase L gate checklist :crit, t72_6, after t72_3, 0.5d
    section Slice 14 (0%)
    73.3 Scaffold React + Vite + Tailwind + Zustand :crit, t73_3, after t72_6, 0.5d
    74.1 Implement chat panel per ICD-025/027, message :crit, t74_1, after t73_3, 0.5d
    75.2 Implement live agent graph, contract cards per Goal :crit, t75_2, after t74_1, 0.5d
    76.2 Implement tree explorer, celestial badges per Goal :crit, t76_2, after t75_2, 0.5d
    77.1 Implement lane monitor, task timeline per :crit, t77_1, after t76_2, 0.5d
    78.1 Implement log viewer, trace tree, metrics dashboard :crit, t78_1, after t77_1, 0.5d
    78.4 Phase M gate checklist :crit, t78_4, after t78_1, 0.5d
    section Slice 15 (0%)
    79.2 Build Docker Compose (dev) + production Dockerfile :crit, t79_2, after t78_4, 1d
    80.2 Implement VPC/CFn, ALB/WAF, ECS Fargate task defs :crit, t80_2, after t79_2, 0.5d
    81.1 Implement Authentik OIDC flows per ICD-004/005/047, :crit, t81_1, after t80_2, 1d
    82.1 Implement feature flags :crit, t82_1, after t81_1, 0.5d
    82.2 Implement canary deploys per ICD staged deployment :crit, t82_2, after t82_1, 0.5d
    82.3 Implement progressive delivery gates per eval framework :crit, t82_3, after t82_2, 0.5d
    84.1 Aggregate all FMEA results across all phases (A-N) :crit, t84_1, after t82_3, 0.5d
    84.2 Build full system safety argument per ISO 42010, :crit, t84_2, after t84_1, 1d
    84.7 Final Behavior Spec Validation :crit, t84_7, after t84_2, 1.5d
    84.8 Verify Goal Hierarchy Theorems per Goal Hierarchy §3 :crit, t84_8, after t84_7, 0.5d
    84.4 Verify all TLA+ specs pass final model check :crit, t84_4, after t84_8, 1.5d
    84.5 Independent safety review per SIL-3 rigor (Kernel, :crit, t84_5, after t84_4, 1d
    84.6 Release gate - safety case complete? :crit, t84_6, after t84_5, 0.5d
    86.5 Phase N gate checklist :crit, t86_5, after t84_6, 0.5d
